# Project1_june18class

Schedule from MS Project, 2020-06-19 to 2021-01-25, costs in $, A marks actual dates.

## Calendars

- Standard: Mon-Fri 08:00-12:00, 13:00-17:00; Sat-Sun off.

## Resources

| Resource | Rate |
| --- | --- |
| PM 1 | 90 |
| PM 2 | 90 |
| DES 1 | 90 |
| DEV 3 | 60 |
| DEV 4 | 60 |
| TEST 1 | 50 |
| TEST 2 | 50 |
| Deploy 1 | 50 |
| Deploy 2 | 50 |
| Req 1 | 70 |
| Req 2 | 70 |
| DEV 1 | 60 |
| DEV 2 | 60 |
| PM 3 | 90 |
| Accountant | 30 |

## Schedule

| ID | WBS | Task | Duration | Start | Finish | Predecessors | Complete | Remaining | Total slack | Resources | Work | Actual work | Cost | Actual cost |
| --- | --- | --- | --- | --- | --- | --- | --- | --- | --- | --- | --- | --- | --- | --- |
| 1 | 1 | **Project Start** | 157d | 2020-06-19 A | 2021-01-25 |  | 85% | 23.55d | 0d |  | 5012h | 4294.8h | 388,280 | 342,944 |
| 2 | 1.1 | **PM Tasks** | 157d | 2020-06-19 A | 2021-01-25 |  | 89% | 16.95d | 0d |  | 2960h | 2703.1h | 265,920 | 243,279 |
| 3 | 1.1.1 | **Start The project** | 5d | 2020-06-19 A | 2020-06-25 A |  | 100% |  |  |  | 40h | 40h | 3,600 | 3,600 |
| 4 | 1.1.1.1 | Formulize project charter | 3d | 2020-06-19 A | 2020-06-23 A |  | 100% |  |  | PM 1 | 24h | 24h | 2,160 | 2,160 |
| 5 | 1.1.1.2 | Interview with customer | 2d | 2020-06-24 A | 2020-06-25 A | 4 | 100% |  |  | PM 2 | 16h | 16h | 1,440 | 1,440 |
| 6 | 1.1.2 | **Manage the project** | 120d | 2020-06-26 A | 2020-12-10 |  | 92% | 9.04d | 32d |  | 2880h | 2663.1h | 259,200 | 239,679 |
| 7 | 1.1.2.1 | Manage the project | 120d | 2020-06-26 A | 2020-12-10 | 5 | 92% | 9.04d | 32d | PM 1; PM 3; PM 2 | 2880h | 2663.1h | 259,200 | 239,679 |
| 8 | 1.1.3 | **Close the project** | 2d | 2021-01-22 | 2021-01-25 |  |  |  | 0d |  | 40h |  | 3,120 |  |
| 9 | 1.1.3.1 | Client Training plan | 2d | 2021-01-22 | 2021-01-25 | 123 |  |  | 0d | PM 1 | 16h |  | 1,440 |  |
| 10 | 1.1.3.2 | Post-completion support plan | 1d | 2021-01-22 | 2021-01-22 | 123 |  |  | 1d | PM 2 | 8h |  | 720 |  |
| 11 | 1.1.3.3 | Diaster recovery plan | 1d | 2021-01-22 | 2021-01-22 | 123 |  |  | 0d | PM 3 | 8h |  | 720 |  |
| 12 | 1.1.3.4 | Get Project-wide PM payment | 1d | 2021-01-25 | 2021-01-25 | 11 |  |  | 0d | Accountant | 8h |  | 240 |  |
| 13 | 1.2 | **Requirements** | 22d | 2020-07-01 A | 2020-07-30 A |  | 100% |  |  |  | 192h | 192h | 13,440 | 13,440 |
| 14 | 1.2.1 | **Server requirements** | 5d | 2020-07-01 A | 2020-07-07 A |  | 100% |  |  |  | 40h | 40h | 2,800 | 2,800 |
| 15 | 1.2.1.1 | Provide server options | 1d | 2020-07-01 A | 2020-07-01 A |  | 100% |  |  | Req 1 | 8h | 8h | 560 | 560 |
| 16 | 1.2.1.2 | Review server requirement with clients | 3d | 2020-07-02 A | 2020-07-06 A | 15 | 100% |  |  | Req 1 | 24h | 24h | 1,680 | 1,680 |
| 17 | 1.2.1.3 | Review and finalize requirements | 1d | 2020-07-07 A | 2020-07-07 A | 16 | 100% |  |  | Req 1 | 8h | 8h | 560 | 560 |
| 18 | 1.2.2 | **Database requirements** | 5d | 2020-07-08 A | 2020-07-14 A |  | 100% |  |  |  | 40h | 40h | 2,800 | 2,800 |
| 19 | 1.2.2.1 | Get initial requirments from the clients | 3d | 2020-07-08 A | 2020-07-10 A | 17 | 100% |  |  | Req 2 | 24h | 24h | 1,680 | 1,680 |
| 20 | 1.2.2.2 | Review and finalize requirements | 2d | 2020-07-13 A | 2020-07-14 A | 19 | 100% |  |  | Req 2 | 16h | 16h | 1,120 | 1,120 |
| 21 | 1.2.3 | **Front-end requirements** | 5d | 2020-07-15 A | 2020-07-21 A |  | 100% |  |  |  | 40h | 40h | 2,800 | 2,800 |
| 22 | 1.2.3.1 | Get user interface requirements | 3d | 2020-07-15 A | 2020-07-17 A | 20 | 100% |  |  | Req 1 | 24h | 24h | 1,680 | 1,680 |
| 23 | 1.2.3.2 | Review and finalize requirements | 2d | 2020-07-20 A | 2020-07-21 A | 22 | 100% |  |  | Req 1 | 16h | 16h | 1,120 | 1,120 |
| 24 | 1.2.4 | **Back-end requirements** | 5d | 2020-07-22 A | 2020-07-28 A |  | 100% |  |  |  | 40h | 40h | 2,800 | 2,800 |
| 25 | 1.2.4.1 | Get back-end requirements from clients | 3d | 2020-07-22 A | 2020-07-24 A | 23 | 100% |  |  | Req 2 | 24h | 24h | 1,680 | 1,680 |
| 26 | 1.2.4.2 | Review and finalize requirements | 2d | 2020-07-27 A | 2020-07-28 A | 25 | 100% |  |  | Req 2 | 16h | 16h | 1,120 | 1,120 |

| ID | WBS | Task | Duration | Start | Finish | Predecessors | Complete | Constraint | Resources | Work | Actual work | Cost | Actual cost |
| --- | --- | --- | --- | --- | --- | --- | --- | --- | --- | --- | --- | --- | --- |
| 27 | 1.2.5 | **Close requirements phase** | 2d | 2020-07-29 A | 2020-07-30 A |  | 100% |  |  | 32h | 32h | 2,240 | 2,240 |
| 28 | 1.2.5.1 | Generate requirement documents | 2d | 2020-07-29 A | 2020-07-30 A | 26 | 100% |  | Req 1; Req 2 | 32h | 32h | 2,240 | 2,240 |
| 29 | 1.3 | Collect Requirement milestone payment | 1d | 2020-07-31 A | 2020-07-31 A | 28 | 100% | finish no earlier than 2020-06-30 | Accountant | 8h | 8h | 240 | 240 |
| 30 | 1.4 | **Design** | 29d | 2020-08-03 A | 2020-09-10 A | 29 | 100% |  |  | 232h | 232h | 20,880 | 20,880 |
| 31 | 1.4.1 | **Server design** | 5d | 2020-08-03 A | 2020-08-07 A |  | 100% |  |  | 40h | 40h | 3,600 | 3,600 |
| 32 | 1.4.1.1 | Choose AWS as server platform | 4d | 2020-08-03 A | 2020-08-06 A | 29 | 100% |  | DES 1 | 32h | 32h | 2,880 | 2,880 |
| 33 | 1.4.1.2 | Finalize server design plan | 1d | 2020-08-07 A | 2020-08-07 A | 32 | 100% |  | DES 1 | 8h | 8h | 720 | 720 |
| 34 | 1.4.2 | **Database design** | 5d | 2020-08-10 A | 2020-08-14 A |  | 100% |  |  | 40h | 40h | 3,600 | 3,600 |
| 35 | 1.4.2.1 | Select framework and architecture | 1d | 2020-08-10 A | 2020-08-10 A | 33 | 100% |  | DES 1 | 8h | 8h | 720 | 720 |
| 36 | 1.4.2.2 | Design functions by following req doc | 3d | 2020-08-11 A | 2020-08-13 A | 35 | 100% |  | DES 1 | 24h | 24h | 2,160 | 2,160 |
| 37 | 1.4.2.3 | Finalize database design plan | 1d | 2020-08-14 A | 2020-08-14 A | 36 | 100% |  | DES 1 | 8h | 8h | 720 | 720 |
| 38 | 1.4.3 | **Front-end design** | 8d | 2020-08-17 A | 2020-08-26 A |  | 100% |  |  | 64h | 64h | 5,760 | 5,760 |
| 39 | 1.4.3.1 | Select framework and architecture | 2d | 2020-08-17 A | 2020-08-18 A | 37 | 100% |  | DES 1 | 16h | 16h | 1,440 | 1,440 |
| 40 | 1.4.3.2 | Design user interface | 3d | 2020-08-19 A | 2020-08-21 A | 39 | 100% |  | DES 1 | 24h | 24h | 2,160 | 2,160 |
| 41 | 1.4.3.3 | Design functions by following req doc | 2d | 2020-08-24 A | 2020-08-25 A | 40 | 100% |  | DES 1 | 16h | 16h | 1,440 | 1,440 |
| 42 | 1.4.3.4 | Finalize front-end design plan | 1d | 2020-08-26 A | 2020-08-26 A | 41 | 100% |  | DES 1 | 8h | 8h | 720 | 720 |
| 43 | 1.4.4 | **Back-end design** | 5d | 2020-08-27 A | 2020-09-02 A |  | 100% |  |  | 40h | 40h | 3,600 | 3,600 |
| 44 | 1.4.4.1 | Select framework and architecture | 2d | 2020-08-27 A | 2020-08-28 A | 42 | 100% |  | DES 1 | 16h | 16h | 1,440 | 1,440 |
| 45 | 1.4.4.2 | Design functions by following req doc | 2d | 2020-08-31 A | 2020-09-01 A | 44 | 100% |  | DES 1 | 16h | 16h | 1,440 | 1,440 |
| 46 | 1.4.4.3 | Finalize back-end design plan | 1d | 2020-09-02 A | 2020-09-02 A | 45 | 100% |  | DES 1 | 8h | 8h | 720 | 720 |
| 47 | 1.4.5 | **Test plan design** | 3d | 2020-09-03 A | 2020-09-07 A |  | 100% |  |  | 24h | 24h | 2,160 | 2,160 |
| 48 | 1.4.5.1 | Provide test cases | 3d | 2020-09-03 A | 2020-09-07 A | 46 | 100% |  | DES 1 | 24h | 24h | 2,160 | 2,160 |
| 49 | 1.4.6 | Close design phase | 3d | 2020-09-08 A | 2020-09-10 A | 48 | 100% |  | DES 1 | 24h | 24h | 2,160 | 2,160 |
| 50 | 1.5 | Collect Design milestone payment | 1d | 2020-09-11 A | 2020-09-11 A | 49 | 100% |  | Accountant | 8h | 8h | 240 | 240 |

| ID | WBS | Task | Duration | Start | Finish | Predecessors | Complete | Resources | Work | Actual work | Cost | Actual cost |
| --- | --- | --- | --- | --- | --- | --- | --- | --- | --- | --- | --- | --- |
| 51 | 1.6 | **Development** | 43d | 2020-09-11 A | 2020-11-10 A |  | 100% |  | 744h | 744h | 44,640 | 44,640 |
| 52 | 1.6.1 | **Server deveplopment** | 5d | 2020-09-14 A | 2020-09-18 A |  | 100% |  | 40h | 40h | 2,400 | 2,400 |
| 53 | 1.6.1.1 | Set up the server | 5d | 2020-09-14 A | 2020-09-18 A | 50 | 100% | DEV 1 | 40h | 40h | 2,400 | 2,400 |
| 54 | 1.6.2 | **Database development** | 15d | 2020-09-11 A | 2020-10-01 A |  | 100% |  | 120h | 120h | 7,200 | 7,200 |
| 55 | 1.6.2.1 | Online database setup | 5d | 2020-09-11 A | 2020-09-17 A | 50 | 100% | DEV 2 | 40h | 40h | 2,400 | 2,400 |
| 56 | 1.6.2.2 | User profile history | 6d | 2020-09-18 A | 2020-09-25 A | 55 | 100% | DEV 2 | 48h | 48h | 2,880 | 2,880 |
| 57 | 1.6.2.3 | Auto parts info list | 4d | 2020-09-28 A | 2020-10-01 A | 56 | 100% | DEV 2 | 32h | 32h | 1,920 | 1,920 |
| 58 | 1.6.3 | **Front end Development** | 38d | 2020-09-11 A | 2020-11-03 A |  | 100% |  | 304h | 304h | 18,240 | 18,240 |
| 59 | 1.6.3.1 | Code User interface structure | 5d | 2020-09-11 A | 2020-09-17 A | 50 | 100% | DEV 3 | 40h | 40h | 2,400 | 2,400 |
| 60 | 1.6.3.2 | Code Navigation system function | 2d | 2020-09-18 A | 2020-09-21 A | 59 | 100% | DEV 3 | 16h | 16h | 960 | 960 |
| 61 | 1.6.3.3 | Code End-user profile structure | 3d | 2020-09-22 A | 2020-09-24 A | 60 | 100% | DEV 3 | 24h | 24h | 1,440 | 1,440 |
| 62 | 1.6.3.4 | Code Client profile structure | 1d | 2020-09-25 A | 2020-09-25 A | 61 | 100% | DEV 3 | 8h | 8h | 480 | 480 |
| 63 | 1.6.3.5 | Code Auto parts management system | 3d | 2020-09-28 A | 2020-09-30 A | 62 | 100% | DEV 3 | 24h | 24h | 1,440 | 1,440 |
| 64 | 1.6.3.6 | Code Product page structure | 5d | 2020-10-01 A | 2020-10-07 A | 63 | 100% | DEV 1 | 40h | 40h | 2,400 | 2,400 |
| 65 | 1.6.3.7 | Code Index page structure | 1d | 2020-10-08 A | 2020-10-08 A | 64 | 100% | DEV 1 | 8h | 8h | 480 | 480 |
| 66 | 1.6.3.8 | Code Search page function | 1d | 2020-10-09 A | 2020-10-09 A | 65 | 100% | DEV 1 | 8h | 8h | 480 | 480 |
| 67 | 1.6.3.9 | Code Image and content page | 3d | 2020-10-12 A | 2020-10-14 A | 66 | 100% | DEV 1 | 24h | 24h | 1,440 | 1,440 |
| 68 | 1.6.3.10 | Code Search bar function | 1d | 2020-10-15 A | 2020-10-15 A | 67 | 100% | DEV 2 | 8h | 8h | 480 | 480 |
| 69 | 1.6.3.11 | Code User registration page | 3d | 2020-10-16 A | 2020-10-20 A | 68 | 100% | DEV 2 | 24h | 24h | 1,440 | 1,440 |
| 70 | 1.6.3.12 | Code Login page structure | 3d | 2020-10-21 A | 2020-10-23 A | 69 | 100% | DEV 2 | 24h | 24h | 1,440 | 1,440 |
| 71 | 1.6.3.13 | Code Final receipt page | 3d | 2020-10-26 A | 2020-10-28 A | 70 | 100% | DEV 3 | 24h | 24h | 1,440 | 1,440 |
| 72 | 1.6.3.14 | Code Check out page | 4d | 2020-10-29 A | 2020-11-03 A | 71 | 100% | DEV 3 | 32h | 32h | 1,920 | 1,920 |
| 73 | 1.6.4 | **Back-end development** | 15d | 2020-09-11 A | 2020-10-01 A |  | 100% |  | 120h | 120h | 7,200 | 7,200 |
| 74 | 1.6.4.1 | Code Product search function | 3d | 2020-09-11 A | 2020-09-15 A | 50 | 100% | DEV 4 | 24h | 24h | 1,440 | 1,440 |
| 75 | 1.6.4.2 | Code Product list structure | 2d | 2020-09-16 A | 2020-09-17 A | 74 | 100% | DEV 4 | 16h | 16h | 960 | 960 |
| 76 | 1.6.4.3 | Code User account sturcture | 2d | 2020-09-18 A | 2020-09-21 A | 75 | 100% | DEV 4 | 16h | 16h | 960 | 960 |
| 77 | 1.6.4.4 | Code Subscription function | 2d | 2020-09-22 A | 2020-09-23 A | 76 | 100% | DEV 4 | 16h | 16h | 960 | 960 |
| 78 | 1.6.4.5 | Code E-commerce function | 2d | 2020-09-24 A | 2020-09-25 A | 77 | 100% | DEV 4 | 16h | 16h | 960 | 960 |
| 79 | 1.6.4.6 | Code Site search function | 2d | 2020-09-28 A | 2020-09-29 A | 78 | 100% | DEV 4 | 16h | 16h | 960 | 960 |
| 80 | 1.6.4.7 | Code Login in and access function | 2d | 2020-09-30 A | 2020-10-01 A | 79 | 100% | DEV 4 | 16h | 16h | 960 | 960 |
| 81 | 1.6.5 | Close development phase | 5d | 2020-11-04 A | 2020-11-10 A | 53, 57, 72, 80 | 100% | DEV 1; DEV 2; DEV 3; DEV 4 | 160h | 160h | 9,600 | 9,600 |
| 82 | 1.7 | Collect Development milestone payment | 1d | 2020-11-11 A | 2020-11-11 A | 81 | 100% | Accountant | 8h | 8h | 240 | 240 |

| ID | WBS | Task | Duration | Start | Finish | Predecessors | Complete | Remaining | Total slack | Free slack | Constraint | Resources | Work | Actual work | Cost | Actual cost |
| --- | --- | --- | --- | --- | --- | --- | --- | --- | --- | --- | --- | --- | --- | --- | --- | --- |
| 83 | 1.8 | **Test** | 82.5d | 2020-09-21 A | 2021-01-13 |  | 61% | 32.54d | 8.5d |  |  |  | 812h | 399.7h | 40,600 | 19,985 |
| 84 | 1.8.1 | **Server Testing** | 5d | 2020-09-21 A | 2020-09-25 A |  | 100% |  |  |  |  |  | 40h | 40h | 2,000 | 2,000 |
| 85 | 1.8.1.1 | Testing server functionality | 5d | 2020-09-21 A | 2020-09-25 A | 53 | 100% |  |  |  |  | TEST 1 | 40h | 40h | 2,000 | 2,000 |
| 86 | 1.8.2 | **Database testing** | 9d | 2020-09-24 A | 2020-10-06 A |  | 100% |  |  |  |  |  | 72h | 72h | 3,600 | 3,600 |
| 87 | 1.8.2.1 | Testing database functionality | 3d | 2020-09-24 A | 2020-09-28 A | 57 | 100% |  |  |  |  | TEST 2 | 24h | 24h | 1,200 | 1,200 |
| 88 | 1.8.2.2 | User profile history function test | 3d | 2020-09-29 A | 2020-10-01 A | 87 | 100% |  |  |  |  | TEST 2 | 24h | 24h | 1,200 | 1,200 |
| 89 | 1.8.2.3 | Auto parts info list function test | 3d | 2020-10-02 A | 2020-10-06 A | 88 | 100% |  |  |  |  | TEST 2 | 24h | 24h | 1,200 | 1,200 |
| 90 | 1.8.3 | **Front-end testing** | 31.5d | 2020-11-04 A | 2020-12-17 |  | 57% | 13.54d | 8.5d |  |  |  | 252h | 143.7h | 12,600 | 7,185 |
| 91 | 1.8.3.1 | Perform User interface unit test | 4d | 2020-11-04 A | 2020-11-09 A | 72, 85 | 100% |  |  |  |  | TEST 1 | 32h | 32h | 1,600 | 1,600 |
| 92 | 1.8.3.2 | Perform Navigation system unit test | 2d | 2020-11-10 A | 2020-11-11 A | 91 | 100% |  |  |  |  | TEST 1 | 16h | 16h | 800 | 800 |
| 93 | 1.8.3.3 | Perform End-user profile unit test | 3d | 2020-11-12 A | 2020-11-16 A | 92 | 100% |  |  |  |  | TEST 1 | 24h | 24h | 1,200 | 1,200 |
| 94 | 1.8.3.4 | Perform Client profile unit test | 1d | 2020-11-17 A | 2020-11-17 A | 93 | 100% |  |  |  |  | TEST 1 | 8h | 8h | 400 | 400 |
| 95 | 1.8.3.5 | Perform Auto parts management unit test | 2d | 2020-11-18 A | 2020-11-19 A | 94 | 100% |  |  |  |  | TEST 1 | 16h | 16h | 800 | 800 |
| 96 | 1.8.3.6 | Perform Product page unit test | 5d | 2020-11-20 A | 2020-11-26 A | 95 | 100% |  |  |  |  | TEST 1 | 40h | 40h | 2,000 | 2,000 |
| 97 | 1.8.3.7 | Perform Index page unit test | 1d | 2020-11-27 A | 2020-11-27 | 96 | 96% | 0.04d | 8.5d | 0d |  | TEST 1 | 8h | 7.7h | 400 | 385 |
| 98 | 1.8.3.8 | Perform Search page unit test | 1d | 2020-11-30 | 2020-11-30 | 97 |  |  | 8.5d | 0d |  | TEST 1 | 8h |  | 400 |  |
| 99 | 1.8.3.9 | Perform Image and content page unit test | 1d | 2020-12-01 | 2020-12-01 | 98 |  |  | 8.5d | 0d |  | TEST 1 | 8h |  | 400 |  |
| 100 | 1.8.3.10 | Perform Search bar function unit test | 2d | 2020-12-02 | 2020-12-03 | 99 |  |  | 8.5d | 0d |  | TEST 1 | 16h |  | 800 |  |
| 101 | 1.8.3.11 | Perform User registration page unit test | 3d | 2020-12-04 | 2020-12-08 | 100 |  |  | 8.5d | 0d |  | TEST 1 | 24h |  | 1,200 |  |
| 102 | 1.8.3.12 | Perform Login page unit test | 1.5d | 2020-12-09 | 2020-12-10 | 101 |  |  | 8.5d | 0d |  | TEST 1 | 12h |  | 600 |  |
| 103 | 1.8.3.13 | Perform Final receipt page unit test | 2d | 2020-12-10 | 2020-12-14 | 102 |  |  | 8.5d | 0d |  | TEST 1 | 16h |  | 800 |  |
| 104 | 1.8.3.14 | Perform Check out page unit test | 3d | 2020-12-14 | 2020-12-17 | 103 |  |  | 8.5d | 0d |  | TEST 1 | 24h |  | 1,200 |  |
| 105 | 1.8.4 | **Back-end testing** | 18d | 2020-10-07 A | 2020-10-30 A |  | 100% |  |  |  |  |  | 144h | 144h | 7,200 | 7,200 |
| 106 | 1.8.4.1 | Perform Product search unit test | 3d | 2020-10-07 A | 2020-10-09 A | 80, 89 | 100% |  |  |  |  | TEST 2 | 24h | 24h | 1,200 | 1,200 |
| 107 | 1.8.4.2 | Perform Product list unit test | 3d | 2020-10-12 A | 2020-10-14 A | 106 | 100% |  |  |  |  | TEST 2 | 24h | 24h | 1,200 | 1,200 |
| 108 | 1.8.4.3 | Perform User account unit test | 3d | 2020-10-15 A | 2020-10-19 A | 107 | 100% |  |  |  |  | TEST 2 | 24h | 24h | 1,200 | 1,200 |
| 109 | 1.8.4.4 | Perform Subscription unit test | 3d | 2020-10-20 A | 2020-10-22 A | 108 | 100% |  |  |  |  | TEST 2 | 24h | 24h | 1,200 | 1,200 |
| 110 | 1.8.4.5 | Perform E-commerce function unit test | 2d | 2020-10-23 A | 2020-10-26 A | 109 | 100% |  |  |  |  | TEST 2 | 16h | 16h | 800 | 800 |
| 111 | 1.8.4.6 | Perform Site search unit test | 2d | 2020-10-27 A | 2020-10-28 A | 110 | 100% |  |  |  |  | TEST 2 | 16h | 16h | 800 | 800 |
| 112 | 1.8.4.7 | Perform Login in and access unit test | 2d | 2020-10-29 A | 2020-10-30 A | 111 | 100% |  |  |  |  | TEST 2 | 16h | 16h | 800 | 800 |
| 113 | 1.8.5 | Perform Integrating testing | 3d | 2020-12-17 | 2020-12-22 | 112, 104, 89, 85 |  |  | 8.5d | 0d |  | TEST 1; TEST 2 | 48h |  | 2,400 |  |
| 114 | 1.8.6 | Perform End-to-end testing | 5d | 2020-12-22 | 2020-12-29 | 113 |  |  | 8.5d | 0d |  | TEST 1; TEST 2 | 80h |  | 4,000 |  |
| 115 | 1.8.7 | Perform Defect test case fixing | 8d | 2020-12-29 | 2021-01-08 | 114 |  |  | 8.5d | 0d |  | TEST 1; TEST 2 | 128h |  | 6,400 |  |
| 116 | 1.8.8 | Close testing phase | 3d | 2021-01-08 | 2021-01-13 | 115 |  |  | 8.5d |  |  | TEST 1; TEST 2 | 48h |  | 2,400 |  |
| 117 | 1.9 | Collect Testing milestone payment | 1d | 2021-01-14 | 2021-01-14 |  |  |  | 0d |  | start no earlier than 2021-01-14 | Accountant | 8h |  | 240 |  |

| ID | WBS | Task | Duration | Start | Finish | Predecessors | Total slack | Resources | Work | Cost |
| --- | --- | --- | --- | --- | --- | --- | --- | --- | --- | --- |
| 118 | 1.10 | **Deployment** | 4d | 2021-01-15 | 2021-01-20 |  | 0d |  | 32h | 1,600 |
| 119 | 1.10.1 | Deploy website | 0.5d | 2021-01-15 | 2021-01-15 | 117 | 0d | Deploy 1 | 4h | 200 |
| 120 | 1.10.2 | Dry run | 0.5d | 2021-01-15 | 2021-01-15 | 119 | 0d | Deploy 2 | 4h | 200 |
| 121 | 1.10.3 | Customer reviews and Signoff | 2d | 2021-01-18 | 2021-01-19 | 120 | 0d | Deploy 1 | 16h | 800 |
| 122 | 1.10.4 | Project Handoff | 1d | 2021-01-20 | 2021-01-20 | 121 | 0d | Deploy 2 | 8h | 400 |
| 123 | 1.11 | Collect deployment milestone payment | 1d | 2021-01-21 | 2021-01-21 | 122 | 0d | Accountant | 8h | 240 |
